# Plan de proyecto modelo2

How a schedule from MS Project changed from version to version. A marks actual dates.

## Version 1 (saved 2010-04-28, file SCH0 Cronograma del Proyecto_total.mpp)

Note of the change: 1er commit

| ID | WBS | Task | Duration | Start | Finish | Predecessors | Complete | Total float |
| --- | --- | --- | --- | --- | --- | --- | --- | --- |
| 1 | 1 | **Proyecto Nuevo** | 164.87d? | 2010-04-07 A | 2011-03-19 |  | 2% | 0d |
| 2 | 1.1 | **Inicio / Visión** | 16d? | 2010-04-07 A | 2010-04-29 |  | 28% | 148.87d |
| 3 |  | Generación de Brief de Proyecto | 1.88d | 2010-04-07 A | 2010-04-08 A |  | 100% |  |
| 4 |  | Definición de Roles y Recursos | 2.5d | 2010-04-07 A | 2010-04-09 |  | 80% | 10.67d |
| 5 |  | Definición de Plan de Comunicación | 1d | 2010-04-07 A | 2010-04-08 A |  | 100% |  |
| 6 |  | Definición de CM | 1d | 2010-04-09 | 2010-04-09 | 3, 5 |  | 161.99d |
| 7 |  | Definición de Tecnología a utilizar | 2d | 2010-04-09 | 2010-04-12 | 3 |  | 160.99d |
| 8 |  | Definición de Plan de Proyecto | 2d | 2010-04-09 | 2010-04-12 | 3 |  | 160.99d |
| 9 |  | Definición de Plan de Calidad | 2d? | 2010-04-09 | 2010-04-13 | 4 |  | 160.37d |
| 10 |  | Estimación de Esfuerzo | 4d | 2010-04-13 A | 2010-04-19 | 3, 4 | 63% | 148.87d |
| 11 |  | Armado de Cronograma | 10d | 2010-04-15 | 2010-04-29 | 10FS-2d |  | 148.87d |
| 12 |  | Presentación de Documentación de Proyecto(E1) | 0d | 2010-04-29 | 2010-04-29 | 3, 4, 5, 7, 10, 11, 6, 8 |  | 148.87d |
| 13 | 1.2 | **Elaboración** | 53.81d? | 2010-04-09 | 2010-06-24 |  |  | 0d |
| 14 | 1.2.1 | **1 - Tareas generales** | 11.94d | 2010-04-09 | 2010-04-26 |  |  | 0d |
| 15 |  | Extracción de Requerimientos CORE | 5d | 2010-04-09 | 2010-04-15 | 3 |  | 0d |
| 16 |  | Entrevistas | 10d | 2010-04-09 | 2010-04-23 | 3, 4 |  | 10.67d |
| 17 |  | Elaboración de lista de Requerimientos | 2.5d | 2010-04-13 | 2010-04-16 | 15SS+2d, 16SS+2d |  | 10.67d |
| 18 |  | Elaboración de Lista de Casos de Uso | 7.26d | 2010-04-15 | 2010-04-26 | 17SS+2d |  | 10.67d |
| 19 | 1.2.2 | **2 - Módulo Gestión de Acceso** | 6.4d | 2010-04-16 | 2010-04-26 |  |  | 0d |
| 20 |  | Listado de Casos de uso No CORE | 1d | 2010-04-16 | 2010-04-16 | 15 |  | 1d |
| 21 |  | Desarrollo de Casos de Uso CORE | 2d | 2010-04-16 | 2010-04-19 | 15 |  | 0d |
| 22 |  | Presentación de Casos de Uso | 1d | 2010-04-20 | 2010-04-20 | 21, 20 |  | 151.59d |
| 23 |  | Diseño Casos de uso CORE | 2.4d | 2010-04-21 | 2010-04-23 | 22 |  | 151.59d |
| 24 |  | Prueba de Documentación | 1d | 2010-04-23 | 2010-04-26 | 23 |  | 151.59d |
| 25 | 1.2.3 | **3 - Móudlo Gestión de Comensales** | 11.71d | 2010-04-20 | 2010-05-05 |  |  | 0d |
| 26 |  | Listado de Casos de uso No CORE | 2.5d | 2010-04-20 | 2010-04-22 | 20, 21 |  | 1.5d |
| 27 |  | Desarrollo de Casos de Uso CORE | 4d | 2010-04-20 | 2010-04-23 | 20, 21 |  | 0d |
| 28 |  | Presentación de Casos de Uso | 1d | 2010-04-26 | 2010-04-26 | 26, 27 |  | 144.28d |
| 29 |  | Diseño Casos de uso CORE | 4.71d | 2010-04-27 | 2010-05-03 | 28 |  | 144.28d |
| 30 |  | Prueba de Documentación | 2d | 2010-05-03 | 2010-05-05 | 29 |  | 144.28d |
| 31 | 1.2.4 | **4 - Móudlo Gestión de la Información** | 13.56d | 2010-04-26 | 2010-05-13 |  |  | 0d |
| 32 |  | Listado de Casos de uso No CORE | 2.5d | 2010-04-26 | 2010-04-28 | 26, 27 |  | 1.5d |
| 33 |  | Desarrollo de Casos de Uso CORE | 4d | 2010-04-26 | 2010-04-29 | 26, 27 |  | 0d |
| 34 |  | Presentación de Casos de Uso | 2d | 2010-04-30 | 2010-05-03 | 32, 33 |  | 138.44d |
| 35 |  | Diseño Casos de uso CORE | 5.56d | 2010-05-04 | 2010-05-11 | 34 |  | 138.44d |
| 36 |  | Prueba de Documentación | 2d | 2010-05-11 | 2010-05-13 | 35 |  | 138.44d |
| 37 | 1.2.5 | **5 - Móudlo Gestión de Ponderaciones** | 10.29d | 2010-04-30 | 2010-05-14 |  |  | 0d |
| 38 |  | Listado de Casos de uso No CORE | 3d | 2010-04-30 | 2010-05-04 | 32, 33 |  | 0d |
| 39 |  | Desarrollo de Casos de Uso CORE | 2d | 2010-04-30 | 2010-05-03 | 32, 33 |  | 1d |
| 40 |  | Presentación de Casos de Uso | 1d | 2010-05-05 | 2010-05-05 | 38, 39 |  | 28.52d |
| 41 |  | Diseño Casos de uso CORE | 4.29d | 2010-05-06 | 2010-05-12 | 40 |  | 28.52d |
| 42 |  | Prueba de Documentación | 2d | 2010-05-12 | 2010-05-14 | 41 |  | 28.52d |
| 43 |  | Casos de uso - entrega parcial (E2) | 0d | 2010-05-14 | 2010-05-14 | 42 |  | 28.52d |
| 44 |  | Documentación de diseño - entrega parcial (E3) | 0d | 2010-05-14 | 2010-05-14 | 42 |  | 28.52d |
| 45 | 1.2.8 | **6 - Móudlo Gestión de Reservas** | 22.46d | 2010-05-05 | 2010-06-04 |  |  | 0d |
| 46 |  | Listado de Casos de uso No CORE | 4d | 2010-05-05 | 2010-05-10 | 38, 39 |  | 5d |
| 47 |  | Desarrollo de Casos de Uso CORE | 9d | 2010-05-05 | 2010-05-17 | 38, 39 |  | 0d |
| 48 |  | Presentación de Casos de Uso | 1d | 2010-05-18 | 2010-05-18 | 46, 47 |  | 122.53d |
| 49 |  | Diseño Casos de uso CORE | 9.46d | 2010-05-19 | 2010-06-01 | 48 |  | 122.53d |
| 50 |  | Prueba de Documentación | 3d | 2010-06-01 | 2010-06-04 | 49 |  | 122.53d |
| 51 | 1.2.9 | **7 - Móudlo Gestión de Restaurantes** | 20.84d | 2010-05-18 | 2010-06-15 |  |  | 0d |
| 52 |  | Listado de Casos de uso No CORE | 5d | 2010-05-18 | 2010-05-24 | 46, 47 |  | 2.5d |
| 53 |  | Desarrollo de Casos de Uso CORE | 7.5d | 2010-05-18 | 2010-05-27 | 46, 47 |  | 0d |
| 54 |  | Presentación de Casos de Uso | 1.25d | 2010-05-27 | 2010-05-28 | 52, 53 |  | 115.15d |
| 55 |  | Diseño Casos de uso CORE | 9.09d | 2010-05-28 | 2010-06-10 | 54 |  | 115.15d |
| 56 |  | Prueba de Documentación | 3d | 2010-06-10 | 2010-06-15 | 55 |  | 115.15d |
| 57 | 1.2.10 | **8 - Móudlo Gestión de Promociones** | 11.81d | 2010-05-27 | 2010-06-14 |  |  | 0d |
| 58 |  | Listado de Casos de uso No CORE | 4d | 2010-05-27 | 2010-06-02 | 52, 53 |  | 0d |
| 59 |  | Desarrollo de Casos de Uso CORE | 4d | 2010-05-27 | 2010-06-02 | 52, 53 |  | 0d |
| 60 |  | Fin de Casos de Uso Funcionales | 0d | 2010-06-02 | 2010-06-02 | 59, 58 |  | 124.49d |
| 61 |  | Presentación de Casos de Uso | 1d | 2010-06-02 | 2010-06-03 | 58, 59 |  | 0d |
| 62 |  | Diseño Casos de uso CORE | 5.56d | 2010-06-03 | 2010-06-11 | 61 |  | 0d |
| 63 |  | Fin de Diseño de CUs Funcionales | 0d | 2010-06-11 | 2010-06-11 | 62 |  | 0d |
| 64 |  | Prueba de Documentación | 1.25d | 2010-06-11 | 2010-06-14 | 63 |  | 0d |
| 65 |  | Prueba General de Documentación | 7.5d? | 2010-06-14 | 2010-06-24 | 64 |  | 0d |
| 66 |  | Entrega E.R.S. (E4) | 0d | 2010-06-24 | 2010-06-24 | 65, 43 |  | 0d |
| 67 |  | Entrega Casos de Uso (E5) | 0d | 2010-06-24 | 2010-06-24 | 65, 43 |  | 0d |
| 68 |  | Entrega Casos de Prueba (E6) | 0d | 2010-06-24 | 2010-06-24 | 65, 43 |  | 0d |
| 69 |  | Entrega Diagrama de Clases (E7) | 0d | 2010-06-24 | 2010-06-24 | 65, 44 |  | 0d |
| 70 |  | Entrega Diagrama de Secuencia (E8) | 0d | 2010-06-24 | 2010-06-24 | 65, 44 |  | 0d |

| ID | WBS | Task | Duration | Start | Finish | Predecessors | Total float |
| --- | --- | --- | --- | --- | --- | --- | --- |
| 71 | 1.2.17 | **9 (Modelo de Seguridad)** | 31.19d | 2010-04-26 | 2010-06-09 | 14 | 10.67d |
| 72 |  | Incorporar a Casos de Uso Modelo de Seguridad | 3.33d | 2010-04-26 | 2010-04-30 |  | 10.67d |
| 73 |  | Diseñar Modelo de Seguridad | 10d | 2010-04-30 | 2010-05-14 | 72 | 10.67d |
| 74 |  | Prueba de Modelo de Seguridad | 17.86d | 2010-05-14 | 2010-06-09 | 72, 73 | 10.67d |
| 75 |  | Fin de Seguridad | 0d | 2010-06-09 | 2010-06-09 | 74 | 10.67d |
| 76 | 1.2.18 | **10 (Diseño de Pantallas)** | 41d | 2010-04-26 | 2010-06-23 | 14 | 110.05d |
| 77 |  | Selección de Pantallas principales | 30d | 2010-04-26 | 2010-06-07 |  | 1.86d |
| 78 |  | Diseño general de presentación | 39d | 2010-04-26 | 2010-06-18 |  | 0.86d |
| 79 |  | Navegación de Pantallas | 10d | 2010-06-08 | 2010-06-23 | 77, 78FS-8d | 0.86d |
| 80 |  | Entrega Documentación de Análisis y Diseño FINAL (E9) | 0d | 2010-06-23 | 2010-06-23 | 79 | 0.86d |
| 81 |  | Fin de Análisis y Diseño (Elaboración) | 0d | 2010-06-23 | 2010-06-23 | 14, 19, 25, 31, 37, 45, 51, 57, 71, 76 | 359.45d |
| 82 | 1.4 | **Construcción** | 78.56d? | 2010-06-24 | 2010-12-13 |  | 0d |
| 83 | 1.4.1 | **1 - …** | 78.56d? | 2010-06-24 | 2010-12-13 |  | 0d |
| 84 |  | Desarrollo | 76.56d | 2010-06-24 | 2010-12-06 | 65, 66, 67, 68, 69, 70, 71 | 0d |
| 85 |  | Pruebas | 25.5d? | 2010-09-24 | 2010-12-13 | 84FF+2d | 0d |
| 86 | 1.5 | **Transición** | 30.62d? | 2010-12-13 | 2011-03-19 |  | 0d |
| 87 | 1.5.1 | **1 - Implementación y Soporte** | 30.62d? | 2010-12-13 | 2011-03-19 |  | 0d |
| 88 |  | Implementación | 0.62d? | 2010-12-13 | 2010-12-15 | 82 | 0d |
| 89 |  | Finalización de Proyecto para Facultad | 0d | 2010-12-15 | 2010-12-15 | 88 | 0d |
| 90 |  | Soporte Técnico | 30d | 2010-12-15 | 2011-03-19 | 89 | 0d |

## Version 2 (saved 2010-05-04, file SCH0 Cronograma del Proyecto.mpp)

Note of the change: 1er commit

Last finish 2011-03-19 → 2010-08-30 (-201d). Complete tasks 2 → 10.

Added:

| ID | Task | Duration | Start | Finish | Predecessors | Resources |
| --- | --- | --- | --- | --- | --- | --- |
| 38 | Evolución de Proyecto: Primer entrega | 0d? | 2010-05-14 | 2010-05-14 | 37 | Líder de Proyecto |
| 41 | Diagrama de Secuencia: Primer entrega (E4) | 0d | 2010-05-14 | 2010-05-14 | 37 | Arquitecto; Desarrollador; Líder de Proyecto |
| 54 | Evolución de Proyecto: Segunda entrega | 0d | 2010-06-04 | 2010-06-04 | 39FS+15d, 40FS+15d | Líder de Proyecto |
| 55 | Entrega E.R.S. (E5) | 0d | 2010-06-04 | 2010-06-04 | 39FS+15d, 40FS+15d | Líder de Proyecto; Analista Funcional |
| 65 | Evolución de Proyecto: Tercer entrega | 0d | 2010-06-30 | 2010-06-30 | 64 | Líder de Proyecto |

Removed: 14 1 - Tareas generales; 15 Extracción de Requerimientos CORE; 16 Entrevistas; 17 Elaboración de lista de Requerimientos; 18 Elaboración de Lista de Casos de Uso; 66 Entrega E.R.S. (E4); 71 9 (Modelo de Seguridad); 72 Incorporar a Casos de Uso Modelo de Seguridad; 73 Diseñar Modelo de Seguridad; 74 Prueba de Modelo de Seguridad; 75 Fin de Seguridad

Changed:

| ID | Task | Start | Finish | Duration | Complete | Total float | Predecessors | Other |
| --- | --- | --- | --- | --- | --- | --- | --- | --- |
| 1 | **Proyecto Nuevo** |  | 2011-03-19 → 2010-08-30 (-201d) | 164.87d? → 100.81d? | 2% → 15% |  |  |  |
| 2 | **Inicio / Visión** |  | 2010-04-29 → 2010-04-28 A (-1d) | 16d? → 15d? | 28% → 100% | 148.87d → none |  |  |
| 4 | Definición de Roles y Recursos |  | 2010-04-09 A |  | 80% → 100% | 10.67d → none |  |  |
| 5 | Definición de Tecnología a utilizar | 2010-04-09 A | 2010-04-12 A |  | 0% → 100% | 160.99d → none |  |  |
| 6 | Definición de Plan de Proyecto | 2010-04-09 A | 2010-04-12 A |  | 0% → 100% | 160.99d → none |  |  |
| 7 | Definición de Plan de Calidad | 2010-04-09 A | 2010-04-13 A |  | 0% → 100% | 160.37d → none |  |  |
| 8 | Definición de Plan de Comunicación | 2010-04-07 A → 2010-04-09 A (+2d) | 2010-04-08 A → 2010-04-13 A (+5d) | 1d → 2d |  |  | none → 4 |  |
| 9 | Definición de CM | 2010-04-09 → 2010-04-13 A (+4d) | 2010-04-09 → 2010-04-14 A (+5d) | 1d → 2d | 0% → 100% | 161.99d → none | 3, 8 → 5 | resources Líder de Proyecto [50%] → Desarrollador [50%] |
| 10 | Estimación de Esfuerzo |  | 2010-04-19 → 2010-04-27 A (+8d) | 4d → 10.56d | 63% → 100% | 148.87d → none |  | resources Líder de Proyecto [10%]; Arquitecto [50%]; Desarrollador [50%] → Líder de Proyecto [10%]; Desarrollador [50%] |
| 11 | Armado de Cronograma | 2010-04-15 → 2010-04-14 A (-1d) | 2010-04-29 → 2010-04-28 A (-1d) |  | 0% → 100% | 148.87d → none | 10FS-2d → 10SS+1d | resources Líder de Proyecto [30%]; Analista Funcional [15%] → Líder de Proyecto [30%] |
| 12 | Presentación de Documentación de Proyecto(E1) | 2010-04-29 → 2010-04-28 A (-1d) | 2010-04-29 → 2010-04-28 A (-1d) |  | 0% → 100% | 148.87d → none |  |  |
| 13 | **Elaboración** | 2010-04-09 → 2010-04-13 A (+4d) | 2010-06-24 → 2010-06-30 (+6d) | 53.81d? → 55.31d? | 0% → 1% |  |  |  |
| 14 | **1 - Módulo Gestión de Acceso** | 2010-04-16 → 2010-04-13 A (-3d) | 2010-04-26 → 2010-04-21 (-5d) | 6.4d → 5.4d | 0% → 20% | 0d → 49.91d |  | was named 2 - Módulo Gestión de Acceso |
| 15 | Listado de Casos de uso No CORE | 2010-04-16 → 2010-04-13 A (-3d) | 2010-04-16 → 2010-04-14 (-2d) |  | 0% → 50% |  | Extracción de Requerimientos CORE → 8 |  |
| 16 | Desarrollo de Casos de Uso CORE | 2010-04-16 → 2010-04-13 A (-3d) | 2010-04-19 → 2010-04-15 (-4d) |  | 0% → 50% |  | Extracción de Requerimientos CORE → 8 |  |
| 17 | Presentación de Casos de Uso | 2010-04-20 → 2010-04-15 (-5d) | 2010-04-20 → 2010-04-16 (-4d) |  |  | 151.59d → 50.91d |  |  |
| 18 | Diseño Casos de uso CORE | 2010-04-21 → 2010-04-16 (-5d) | 2010-04-23 → 2010-04-21 (-2d) |  |  | 151.59d → 50.91d |  |  |
| 19 | Prueba de Documentación | 2010-04-23 → 2010-04-16 (-7d) | 2010-04-26 → 2010-04-19 (-7d) |  |  | 151.59d → 52.31d | 18 → 17 |  |
| 20 | **2 - Móudlo Gestión de Comensales** | 2010-04-20 → 2010-04-15 (-5d) | 2010-05-05 → 2010-05-03 (-2d) |  |  |  |  | was named 3 - Móudlo Gestión de Comensales |
| 21 | Listado de Casos de uso No CORE | 2010-04-20 → 2010-04-15 (-5d) | 2010-04-22 → 2010-04-20 (-2d) |  |  |  |  |  |
| 22 | Desarrollo de Casos de Uso CORE | 2010-04-20 → 2010-04-15 (-5d) | 2010-04-23 → 2010-04-21 (-2d) |  |  |  |  |  |
| 23 | Presentación de Casos de Uso | 2010-04-26 → 2010-04-21 (-5d) | 2010-04-26 → 2010-04-22 (-4d) |  |  | 144.28d → 41.59d |  |  |
| 24 | Diseño Casos de uso CORE | 2010-04-27 → 2010-04-22 (-5d) | 2010-05-03 → 2010-04-29 (-4d) |  |  | 144.28d → 41.59d |  |  |
| 25 | Prueba de Documentación | 2010-05-03 → 2010-04-29 (-4d) | 2010-05-05 → 2010-05-03 (-2d) |  |  | 144.28d → 41.59d |  |  |
| 26 | **3 - Móudlo Gestión de la Información** | 2010-04-26 → 2010-04-21 (-5d) | 2010-05-13 → 2010-05-07 (-6d) | 13.56d → 11.56d |  |  |  | was named 4 - Móudlo Gestión de la Información |
| 27 | Listado de Casos de uso No CORE | 2010-04-26 → 2010-04-21 (-5d) | 2010-04-28 → 2010-04-26 (-2d) |  |  |  |  |  |
| 28 | Desarrollo de Casos de Uso CORE | 2010-04-26 → 2010-04-21 (-5d) | 2010-04-29 → 2010-04-27 (-2d) |  |  |  |  |  |
| 29 | Presentación de Casos de Uso | 2010-04-30 → 2010-04-27 (-3d) | 2010-05-03 → 2010-04-29 (-4d) |  |  | 138.44d → 41.75d |  |  |
| 30 | Diseño Casos de uso CORE | 2010-05-04 → 2010-04-29 (-5d) | 2010-05-11 → 2010-05-07 (-4d) |  |  | 138.44d → 41.75d |  |  |
| 31 | Prueba de Documentación | 2010-05-11 → 2010-04-27 (-14d) | 2010-05-13 → 2010-04-29 (-14d) |  |  | 138.44d → 0d | 30 → 27, 28 |  |
| 32 | **4 - Móudlo Gestión de Ponderaciones** | 2010-04-30 → 2010-04-29 (-1d) |  | 10.29d → 11d |  |  |  | was named 5 - Móudlo Gestión de Ponderaciones |
| 33 | Listado de Casos de uso No CORE | 2010-04-30 → 2010-04-29 (-1d) |  |  |  |  | 27, 28 → 27, 28, 31 |  |
| 34 | Desarrollo de Casos de Uso CORE | 2010-04-30 → 2010-05-04 (+4d) | 2010-05-03 → 2010-05-06 (+3d) |  |  | 1d → 0d | 27, 28 → 27, 28, 33 |  |
| 35 | Presentación de Casos de Uso | 2010-05-05 → 2010-05-06 (+1d) | 2010-05-05 → 2010-05-07 (+2d) |  |  | 28.52d → 21.31d |  |  |
| 36 | Diseño Casos de uso CORE | 2010-05-06 → 2010-05-07 (+1d) | 2010-05-12 → 2010-05-13 (+1d) |  |  | 28.52d → 37.02d |  |  |
| 37 | Prueba de Documentación | 2010-05-12 → 2010-05-10 (-2d) |  | 2d → 4d |  | 28.52d → 21.31d | 36 → 35FS+1d | resources Analista Funcional [50%] → Analista Funcional [25%] |
| 39 | Casos de uso: Primer entrega (E2) |  |  |  |  | 28.52d → 17.31d |  | was named Casos de uso - entrega parcial (E2) |
| 40 | Diagrama de Clases: Primer entrega(E3) |  |  |  |  | 28.52d → 17.31d |  | was named Documentación de diseño - entrega parcial (E3) |
| 42 | **5 - Móudlo Gestión de Reservas** | 2010-05-05 → 2010-05-06 (+1d) | 2010-06-04 → 2010-06-08 (+4d) |  |  |  |  | was named 6 - Móudlo Gestión de Reservas |
| 43 | Listado de Casos de uso No CORE | 2010-05-05 → 2010-05-06 (+1d) | 2010-05-10 → 2010-05-12 (+2d) |  |  |  |  |  |
| 44 | Desarrollo de Casos de Uso CORE | 2010-05-05 → 2010-05-06 (+1d) | 2010-05-17 → 2010-05-19 (+2d) |  |  |  |  |  |
| 45 | Presentación de Casos de Uso | 2010-05-18 → 2010-05-19 (+1d) | 2010-05-18 → 2010-05-20 (+2d) |  |  | 122.53d → 19.84d |  |  |
| 46 | Diseño Casos de uso CORE | 2010-05-19 → 2010-05-20 (+1d) | 2010-06-01 → 2010-06-03 (+2d) |  |  | 122.53d → 19.84d |  |  |
| 47 | Prueba de Documentación | 2010-06-01 → 2010-06-03 (+2d) | 2010-06-04 → 2010-06-08 (+4d) |  |  | 122.53d → 19.84d |  |  |
| 48 | **6 - Móudlo Gestión de Restaurantes** | 2010-05-18 → 2010-05-19 (+1d) | 2010-06-15 → 2010-06-17 (+2d) |  |  |  |  | was named 7 - Móudlo Gestión de Restaurantes |
| 49 | Listado de Casos de uso No CORE | 2010-05-18 → 2010-05-19 (+1d) | 2010-05-24 → 2010-05-26 (+2d) |  |  |  |  |  |
| 50 | Desarrollo de Casos de Uso CORE | 2010-05-18 → 2010-05-19 (+1d) | 2010-05-27 → 2010-05-31 (+4d) |  |  |  |  |  |
| 51 | Presentación de Casos de Uso | 2010-05-27 → 2010-05-31 (+4d) | 2010-05-28 → 2010-06-01 (+4d) |  |  | 115.15d → 12.46d |  |  |
| 52 | Diseño Casos de uso CORE | 2010-05-28 → 2010-06-01 (+4d) | 2010-06-10 → 2010-06-14 (+4d) |  |  | 115.15d → 12.46d |  |  |
| 53 | Prueba de Documentación | 2010-06-10 → 2010-06-14 (+4d) | 2010-06-15 → 2010-06-17 (+2d) |  |  | 115.15d → 12.46d |  |  |
| 56 | **7 - Móudlo Gestión de Promociones** | 2010-05-27 → 2010-05-31 (+4d) | 2010-06-14 → 2010-06-15 (+1d) |  |  |  |  | was named 8 - Móudlo Gestión de Promociones |
| 57 | Listado de Casos de uso No CORE | 2010-05-27 → 2010-05-31 (+4d) | 2010-06-02 → 2010-06-04 (+2d) |  |  |  |  |  |
| 58 | Desarrollo de Casos de Uso CORE | 2010-05-27 → 2010-05-31 (+4d) | 2010-06-02 → 2010-06-04 (+2d) |  |  |  |  |  |
| 59 | Fin de Casos de Uso Funcionales | 2010-06-02 → 2010-06-04 (+2d) | 2010-06-02 → 2010-06-04 (+2d) |  |  | 124.49d → 21.81d |  |  |
| 60 | Presentación de Casos de Uso | 2010-06-02 → 2010-06-04 (+2d) | 2010-06-03 → 2010-06-07 (+4d) |  |  |  |  |  |
| 61 | Diseño Casos de uso CORE | 2010-06-03 → 2010-06-07 (+4d) | 2010-06-11 → 2010-06-14 (+3d) |  |  |  |  |  |
| 62 | Fin de Diseño de CUs Funcionales | 2010-06-11 → 2010-06-14 (+3d) | 2010-06-11 → 2010-06-14 (+3d) |  |  |  |  |  |
| 63 | Prueba de Documentación | 2010-06-11 → 2010-06-14 (+3d) | 2010-06-14 → 2010-06-15 (+1d) |  |  |  |  |  |
| 64 | Prueba General de Documentación | 2010-06-14 → 2010-06-15 (+1d) | 2010-06-24 → 2010-06-30 (+6d) | 7.5d? → 10d |  |  |  | resources Líder de Proyecto [50%]; Arquitecto [50%] → Líder de Proyecto [10%] |
| 66 | Entrega Casos de Uso (E6) | 2010-06-24 → 2010-06-30 (+6d) | 2010-06-24 → 2010-06-30 (+6d) |  |  |  | 64, 39 → 39, 65 | was named Entrega Casos de Uso (E5) |
| 67 | Entrega Casos de Prueba (E7) | 2010-06-24 → 2010-06-30 (+6d) | 2010-06-24 → 2010-06-30 (+6d) |  |  |  |  | was named Entrega Casos de Prueba (E6) |
| 68 | Entrega Diagrama de Clases (E8) | 2010-06-24 → 2010-06-30 (+6d) | 2010-06-24 → 2010-06-30 (+6d) |  |  |  | 64, 40 → 64, 39 | was named Entrega Diagrama de Clases (E7) |
| 69 | Entrega Diagrama de Secuencia (E9) | 2010-06-24 → 2010-06-30 (+6d) | 2010-06-24 → 2010-06-30 (+6d) |  |  |  | 64, 40 → 64, 39 | was named Entrega Diagrama de Secuencia (E8) |
| 70 | Fin de Análisis y Diseño (Elaboración) | 2010-06-23 → 2010-06-17 (-6d) | 2010-06-23 → 2010-06-17 (-6d) |  |  | 359.45d → 53.46d | 1 - Tareas generales, 14, 20, 26, 32, 42, 48, 56, 9 (Modelo de Seguridad), 72 → 14, 20, 26, 32, 42, 48, 56 |  |
| 71 | **Construcción** | 2010-06-24 → 2010-06-30 (+6d) | 2010-12-13 → 2010-08-30 (-105d) | 78.56d? → 41d |  |  | none → 13 |  |
| 72 | **10 (Diseño de Pantallas)** | 2010-04-26 → 2010-06-30 (+65d) | 2010-06-23 → 2010-08-30 (+68d) |  |  | 110.05d → 0d | 1 - Tareas generales → 13 |  |
| 73 | Selección de Pantallas principales | 2010-04-26 → 2010-06-30 (+65d) | 2010-06-07 → 2010-08-12 (+66d) |  |  | 1.86d → 1d |  |  |
| 74 | Diseño general de presentación | 2010-04-26 → 2010-06-30 (+65d) | 2010-06-18 → 2010-08-26 (+69d) |  |  | 0.86d → 0d |  |  |
| 75 | Navegación de Pantallas | 2010-06-08 → 2010-08-13 (+66d) | 2010-06-23 → 2010-08-30 (+68d) |  |  | 0.86d → 0d |  |  |
| 76 | Entrega Documentación de Análisis y Diseño FINAL (E9) | 2010-06-23 → 2010-08-30 (+68d) | 2010-06-23 → 2010-08-30 (+68d) |  |  | 0.86d → 0d |  |  |

| ID | Task | Start | Finish | Duration | Total float | Predecessors | Other |
| --- | --- | --- | --- | --- | --- | --- | --- |
| 77 | **1 - …** | 2010-06-24 → 2010-06-30 (+6d) | 2010-12-13 → 2010-06-30 (-166d) | 78.56d? → 0d | 0d → 41d |  |  |
| 78 | Desarrollo | 2010-06-24 → 2010-06-30 (+6d) | 2010-12-06 → 2010-06-30 (-159d) | 76.56d → 0d | 0d → 41d | 64, Entrega E.R.S. (E4), 66, 67, 68, 69, 9 (Modelo de Seguridad) → none | resources Desarrollador; Arquitecto → none |
| 79 | Pruebas | 2010-09-24 → 2010-06-30 (-86d) | 2010-12-13 → 2010-06-30 (-166d) | 25.5d? → 0d | 0d → 41d | 78FF+2d → none | resources Tester; Analista Funcional [50%] → none |
| 80 | **Transición** | 2010-12-13 → 2010-06-30 (-166d) | 2011-03-19 → 2010-06-30 (-262d) | 30.62d? → 0d | 0d → 41d | none → 13 |  |
| 81 | **1 - Implementación y Soporte** | 2010-12-13 → 2010-06-30 (-166d) | 2011-03-19 → 2010-06-30 (-262d) | 30.62d? → 0d | 0d → 41d |  |  |
| 82 | Implementación | 2010-12-13 → 2010-06-30 (-166d) | 2010-12-15 → 2010-06-30 (-168d) | 0.62d? → 0d | 0d → 41d | 71 → none | resources Líder de Proyecto; Arquitecto → none |
| 83 | Finalización de Proyecto para Facultad | 2010-12-15 → 2010-06-30 (-168d) | 2010-12-15 → 2010-06-30 (-168d) |  | 0d → 41d | 82 → none |  |
| 84 | Soporte Técnico | 2010-12-15 → 2010-06-30 (-168d) | 2011-03-19 → 2010-06-30 (-262d) | 30d → 0d | 0d → 41d | 83 → none |  |

## Version 3 (saved 2010-05-26, file SCH0 Cronograma del Proyecto.mpp)

Note of the change: Preparación para cambio. CCF_1 quitará el Módulo Gestión de Promociones

Last finish stays 2010-08-30. Complete tasks 10 → 17.

Changed:

| ID | Task | Start | Finish | Complete | Total float | Predecessors |
| --- | --- | --- | --- | --- | --- | --- |
| 1 | **Proyecto Nuevo** |  |  | 15% → 26% |  |  |
| 13 | **Elaboración** |  |  | 1% → 22% |  |  |
| 14 | **1 - Módulo Gestión de Acceso** |  |  | 20% → 54% |  |  |
| 15 | Listado de Casos de uso No CORE |  | 2010-04-14 A | 50% → 100% | 1d → none |  |
| 16 | Desarrollo de Casos de Uso CORE |  | 2010-04-15 A | 50% → 100% | 0d → none |  |
| 17 | Presentación de Casos de Uso | 2010-04-15 A | 2010-04-16 A | 0% → 100% | 50.91d → none |  |
| 20 | **2 - Móudlo Gestión de Comensales** | 2010-04-15 A |  | 0% → 46% | 0d → 41.59d |  |
| 21 | Listado de Casos de uso No CORE | 2010-04-15 A | 2010-04-20 A | 0% → 100% | 1.5d → none |  |
| 22 | Desarrollo de Casos de Uso CORE | 2010-04-15 A | 2010-04-21 A | 0% → 100% | 0d → none |  |
| 26 | **3 - Móudlo Gestión de la Información** | 2010-04-21 A |  | 0% → 16% | 0d → 37.75d |  |
| 27 | Listado de Casos de uso No CORE | 2010-04-21 A | 2010-04-26 A | 0% → 100% | 1.5d → none |  |
| 42 | **5 - Móudlo Gestión de Reservas** | 2010-05-06 A |  | 0% → 41% | 0d → 15.84d |  |
| 43 | Listado de Casos de uso No CORE | 2010-05-06 A | 2010-05-12 A | 0% → 100% | 5d → none |  |
| 44 | Desarrollo de Casos de Uso CORE | 2010-05-06 A |  | 0% → 75% | 0d → 0.75d |  |
| 48 | **6 - Móudlo Gestión de Restaurantes** | 2010-05-19 A |  | 0% → 20% | 0d → 8.46d |  |
| 49 | Listado de Casos de uso No CORE | 2010-05-19 A |  | 0% → 90% |  |  |
| 50 | Desarrollo de Casos de Uso CORE | 2010-05-19 A |  | 0% → 10% |  |  |
| 51 | Fin de Casos de Uso Funcionales | 2010-06-04 → 2010-05-31 (-4d) | 2010-06-04 → 2010-05-31 (-4d) |  | 21.81d → 8.46d | 60, 59 → 50, 49 |
| 52 | Presentación de Casos de Uso |  |  |  | 12.46d → 8.46d | 49, 50 → 49, 51 |
| 54 | Fin de Diseño de CUs Funcionales |  |  |  | 0d → 8.46d | 62 → 53 |
| 55 | Prueba de Documentación |  |  |  | 12.46d → 8.46d | 53 → 54 |
| 63 | Prueba de Documentación |  |  |  |  | 54 → 62 |

## Version 4 (saved 2010-06-09, file SCH0 Cronograma del Proyecto.mpp)

Last finish stays 2010-08-30. Complete tasks 17 → 21.

Removed: 58 7 - Móudlo Gestión de Promociones; 59 Listado de Casos de uso No CORE; 60 Desarrollo de Casos de Uso CORE; 61 Presentación de Casos de Uso; 62 Diseño Casos de uso CORE; 63 Prueba de Documentación

Changed:

| ID | Task | Start | Finish | Duration | Complete | Total float | Predecessors | Other |
| --- | --- | --- | --- | --- | --- | --- | --- | --- |
| 1 | **Proyecto Nuevo** |  |  | 100.81d? → 100d? | 26% → 25% |  |  |  |
| 13 | **Elaboración** | 2010-04-13 A → 2010-04-20 A (+7d) |  | 55.31d? → 49.5d? | 22% → 19% |  |  |  |
| 14 | **1 - Módulo Gestión de Acceso** | 2010-04-13 A → 2010-04-20 A (+7d) | 2010-04-21 → 2010-04-28 (+7d) |  |  | 49.91d → 44.1d |  |  |
| 15 | Listado de Casos de uso No CORE | 2010-04-13 A → 2010-04-20 A (+7d) | 2010-04-14 A → 2010-04-21 A (+7d) |  |  |  | 8 → 8FS+5d |  |
| 16 | Desarrollo de Casos de Uso CORE | 2010-04-13 A → 2010-04-20 A (+7d) | 2010-04-15 A → 2010-04-22 A (+7d) |  |  |  | 8 → 8FS+5d |  |
| 17 | Presentación de Casos de Uso | 2010-04-15 A → 2010-04-22 A (+7d) | 2010-04-16 A → 2010-04-23 A (+7d) |  |  |  |  |  |
| 18 | Diseño Casos de uso CORE | 2010-04-16 → 2010-04-23 (+7d) | 2010-04-21 → 2010-04-28 (+7d) |  |  | 49.91d → 44.1d |  |  |
| 19 | Prueba de Documentación | 2010-04-16 → 2010-04-23 (+7d) | 2010-04-19 → 2010-04-26 (+7d) |  |  | 51.31d → 45.5d |  |  |
| 20 | **2 - Móudlo Gestión de Comensales** | 2010-04-15 A → 2010-04-22 A (+7d) | 2010-05-03 → 2010-05-10 (+7d) |  | 46% → 49% | 41.59d → 35.79d |  |  |
| 21 | Listado de Casos de uso No CORE | 2010-04-15 A → 2010-04-22 A (+7d) | 2010-04-20 A → 2010-04-27 A (+7d) |  |  |  |  |  |
| 22 | Desarrollo de Casos de Uso CORE | 2010-04-15 A → 2010-04-22 A (+7d) | 2010-04-21 A → 2010-04-28 A (+7d) |  |  |  |  |  |
| 23 | Presentación de Casos de Uso | 2010-04-21 → 2010-04-28 A (+7d) | 2010-04-22 → 2010-04-29 (+7d) |  | 0% → 50% | 41.59d → 35.79d |  |  |
| 24 | Diseño Casos de uso CORE | 2010-04-22 → 2010-04-29 (+7d) | 2010-04-29 → 2010-05-06 (+7d) |  |  | 41.59d → 35.79d |  |  |
| 25 | Prueba de Documentación | 2010-04-29 → 2010-05-06 (+7d) | 2010-05-03 → 2010-05-10 (+7d) |  |  | 41.59d → 35.79d |  |  |
| 26 | **3 - Móudlo Gestión de la Información** | 2010-04-21 A → 2010-04-28 A (+7d) | 2010-05-07 → 2010-05-14 (+7d) |  | 16% → 8% | 37.75d → 31.94d |  |  |
| 27 | Listado de Casos de uso No CORE | 2010-04-21 A → 2010-04-28 A (+7d) | 2010-04-26 A → 2010-05-03 (+7d) |  | 100% → 50% | none → 3.6d |  |  |
| 28 | Desarrollo de Casos de Uso CORE | 2010-04-21 → 2010-04-28 (+7d) | 2010-04-27 → 2010-05-04 (+7d) |  |  | 7.5d → 2.1d |  |  |
| 29 | Presentación de Casos de Uso | 2010-04-27 → 2010-05-04 (+7d) | 2010-04-29 → 2010-05-06 (+7d) |  |  | 37.75d → 31.94d |  |  |
| 30 | Diseño Casos de uso CORE | 2010-04-29 → 2010-05-06 (+7d) | 2010-05-07 → 2010-05-14 (+7d) |  |  | 37.75d → 31.94d |  |  |
| 31 | Prueba de Documentación | 2010-04-27 → 2010-05-04 (+7d) | 2010-04-29 → 2010-05-06 (+7d) |  |  | 7.5d → 2.1d |  |  |
| 32 | Evolución de Proyecto: Primer entrega | 2010-05-14 A | 2010-05-14 A |  | 0% → 100% | 32.31d → none | 41 → 26 |  |
| 33 | Casos de uso: Primer entrega (E2) | 2010-05-14 A | 2010-05-14 A |  | 0% → 100% | 17.31d → none | 41 → 26 |  |
| 34 | Diagrama de Clases: Primer entrega(E3) | 2010-05-14 A | 2010-05-14 A |  | 0% → 100% | 17.31d → none | 41 → 26 |  |
| 35 | Diagrama de Secuencia: Primer entrega (E4) | 2010-05-14 A | 2010-05-14 A |  | 0% → 100% | 32.31d → none | 41 → 26 | resources Arquitecto; Desarrollador; Líder de Proyecto → Arquitecto [50%]; Desarrollador; Líder de Proyecto [50%] |
| 36 | **4 - Móudlo Gestión de Ponderaciones** | 2010-04-29 → 2010-05-06 A (+7d) | 2010-05-14 → 2010-05-21 (+7d) |  | 0% → 2% | 7.5d → 26.5d |  |  |
| 37 | Listado de Casos de uso No CORE | 2010-04-29 → 2010-05-06 A (+7d) | 2010-05-04 → 2010-05-11 (+7d) |  | 0% → 10% | 7.5d → 1.8d |  |  |
| 38 | Desarrollo de Casos de Uso CORE | 2010-05-04 → 2010-05-11 (+7d) | 2010-05-06 → 2010-05-13 (+7d) |  |  | 7.5d → 1.8d |  |  |
| 39 | Presentación de Casos de Uso | 2010-05-06 → 2010-05-13 (+7d) | 2010-05-07 → 2010-05-14 (+7d) |  |  | 17.31d → 26.5d |  |  |
| 40 | Diseño Casos de uso CORE | 2010-05-07 → 2010-05-14 (+7d) | 2010-05-13 → 2010-05-20 (+7d) |  |  | 33.02d → 27.21d |  |  |
| 41 | Prueba de Documentación | 2010-05-10 → 2010-05-17 (+7d) | 2010-05-14 → 2010-05-21 (+7d) |  |  | 17.31d → 26.5d |  |  |
| 42 | **5 - Móudlo Gestión de Reservas** | 2010-05-06 A → 2010-05-13 A (+7d) | 2010-06-08 → 2010-06-15 (+7d) |  | 41% → 19% | 15.84d → 10.04d |  |  |
| 43 | Listado de Casos de uso No CORE | 2010-05-06 A → 2010-05-13 A (+7d) | 2010-05-12 A → 2010-05-19 (+7d) |  | 100% → 80% | none → 5d |  |  |
| 44 | Desarrollo de Casos de Uso CORE | 2010-05-06 A → 2010-05-13 A (+7d) | 2010-05-19 → 2010-05-26 (+7d) |  | 75% → 20% | 0.75d → 0d |  |  |
| 45 | Presentación de Casos de Uso | 2010-05-19 → 2010-05-26 (+7d) | 2010-05-20 → 2010-05-27 (+7d) |  |  | 15.84d → 10.04d |  |  |
| 46 | Diseño Casos de uso CORE | 2010-05-20 → 2010-05-27 (+7d) | 2010-06-03 → 2010-06-10 (+7d) |  |  | 15.84d → 10.04d |  |  |
| 47 | Prueba de Documentación | 2010-06-03 → 2010-06-10 (+7d) | 2010-06-08 → 2010-06-15 (+7d) |  |  | 15.84d → 10.04d |  |  |
| 48 | **6 - Móudlo Gestión de Restaurantes** | 2010-05-19 A → 2010-05-27 A (+8d) | 2010-06-17 → 2010-06-28 (+11d) |  | 20% → 15% | 8.46d → 1.66d |  |  |
| 49 | Listado de Casos de uso No CORE | 2010-05-19 A → 2010-05-27 A (+8d) | 2010-05-26 → 2010-06-03 (+8d) |  | 90% → 80% |  | 43, 44 → 43FS+1d, 44FS+1d |  |
| 50 | Desarrollo de Casos de Uso CORE | 2010-05-19 A → 2010-05-27 (+8d) | 2010-05-31 → 2010-06-08 (+8d) |  | 10% → 0% |  | 43, 44 → 43FS+1d, 44FS+1d |  |
| 51 | Fin de Casos de Uso Funcionales | 2010-05-31 → 2010-06-08 (+8d) | 2010-05-31 → 2010-06-08 (+8d) |  |  | 8.46d → 1.66d |  |  |
| 52 | Presentación de Casos de Uso | 2010-05-31 → 2010-06-08 (+8d) | 2010-06-01 → 2010-06-09 (+8d) |  |  | 8.46d → 1.66d |  |  |
| 53 | Diseño Casos de uso CORE | 2010-06-01 → 2010-06-09 (+8d) | 2010-06-14 → 2010-06-23 (+9d) |  |  | 8.46d → 1.66d |  |  |
| 54 | Fin de Diseño de CUs Funcionales | 2010-06-14 → 2010-06-23 (+9d) | 2010-06-14 → 2010-06-23 (+9d) |  |  | 8.46d → 1.66d |  |  |
| 55 | Prueba de Documentación | 2010-06-14 → 2010-06-23 (+9d) | 2010-06-17 → 2010-06-28 (+11d) |  |  | 8.46d → 1.66d |  |  |
| 56 | Evolución de Proyecto: Segunda entrega | 2010-06-04 A | 2010-06-04 A |  | 0% → 100% | 17.31d → none |  |  |
| 57 | Entrega E.R.S. (E5) | 2010-06-04 A | 2010-06-04 A |  | 0% → 100% | 17.31d → none |  | resources Líder de Proyecto; Analista Funcional → Líder de Proyecto [50%]; Analista Funcional [50%] |
| 58 | Prueba General de Documentación |  |  |  |  |  | Prueba de Documentación → 15FS+5d, 16FS+5d, 21FS+5d, 22FS+5d, 27FS+5d, 28FS+5d, 37FS+5d, 38FS+5d, 43FS+5d, 44FS+5d, 49FS+5d, 50FS+5d |  |
| 60 | Entrega Casos de Uso (E6) |  |  |  |  |  |  | resources Líder de Proyecto; Analista Funcional → Líder de Proyecto [50%]; Analista Funcional [50%] |
| 61 | Entrega Casos de Prueba (E7) |  |  |  |  |  |  | resources Analista Funcional; Líder de Proyecto → Analista Funcional; Líder de Proyecto [50%] |
| 64 | Fin de Análisis y Diseño (Elaboración) | 2010-06-17 → 2010-06-23 (+6d) | 2010-06-17 → 2010-06-23 (+6d) |  |  | 49.46d → 45.66d | 14, 20, 26, 36, 42, 48, 7 - Móudlo Gestión de Promociones → 51, 54 |  |
