# Plan de proyecto modelo2

How a schedule from MS Project changed from version to version. A marks actual dates.

## Version 1 (saved 2010-05-13)

Note of the change: actualización de porcentajes de tareas funcionales

| ID | WBS | Task | Duration | Start | Finish | Predecessors | Complete | Total float |
| --- | --- | --- | --- | --- | --- | --- | --- | --- |
| 1 | 1 | **Proyecto Nuevo** | 100.81d? | 2010-04-07 A | 2010-08-30 |  | 24% | 4d |
| 2 | 1.1 | **Inicio / Visión** | 15d? | 2010-04-07 A | 2010-04-28 A |  | 100% |  |
| 3 |  | Generación de Brief de Proyecto | 1.88d | 2010-04-07 A | 2010-04-08 A |  | 100% |  |
| 4 |  | Definición de Roles y Recursos | 2.5d | 2010-04-07 A | 2010-04-09 A |  | 100% |  |
| 5 |  | Definición de Tecnología a utilizar | 2d | 2010-04-09 A | 2010-04-12 A | 3 | 100% |  |
| 6 |  | Definición de Plan de Proyecto | 2d | 2010-04-09 A | 2010-04-12 A | 3 | 100% |  |
| 7 |  | Definición de Plan de Calidad | 2d? | 2010-04-09 A | 2010-04-13 A | 4 | 100% |  |
| 8 |  | Definición de Plan de Comunicación | 2d | 2010-04-09 A | 2010-04-13 A | 4 | 100% |  |
| 9 |  | Definición de CM | 2d | 2010-04-13 A | 2010-04-14 A | 5 | 100% |  |
| 10 |  | Estimación de Esfuerzo | 10.56d | 2010-04-13 A | 2010-04-27 A | 3, 4 | 100% |  |
| 11 |  | Armado de Cronograma | 10d | 2010-04-14 A | 2010-04-28 A | 10SS+1d | 100% |  |
| 12 |  | Presentación de Documentación de Proyecto(E1) | 0d | 2010-04-28 A | 2010-04-28 A | 3, 4, 5, 10, 11, 6, 8, 9 | 100% |  |
| 13 | 1.2 | **Elaboración** | 55.31d? | 2010-04-13 A | 2010-06-30 |  | 18% | 4d |
| 14 | 1.2.1 | **1 - Módulo Gestión de Acceso** | 5.4d | 2010-04-13 A | 2010-04-21 |  | 54% | 50.91d |
| 15 |  | Listado de Casos de uso No CORE | 1d | 2010-04-13 A | 2010-04-14 A | 8 | 100% |  |
| 16 |  | Desarrollo de Casos de Uso CORE | 2d | 2010-04-13 A | 2010-04-15 A | 8 | 100% |  |
| 17 |  | Presentación de Casos de Uso | 1d | 2010-04-15 A | 2010-04-16 A | 16, 15 | 100% |  |
| 18 |  | Diseño Casos de uso CORE | 2.4d | 2010-04-16 | 2010-04-21 | 17 |  | 50.91d |
| 19 |  | Prueba de Documentación | 1d | 2010-04-16 | 2010-04-19 | 17 |  | 52.31d |
| 20 | 1.2.2 | **2 - Móudlo Gestión de Comensales** | 11.71d | 2010-04-15 A | 2010-05-03 |  | 46% | 41.59d |
| 21 |  | Listado de Casos de uso No CORE | 2.5d | 2010-04-15 A | 2010-04-20 A | 15, 16 | 100% |  |
| 22 |  | Desarrollo de Casos de Uso CORE | 4d | 2010-04-15 A | 2010-04-21 A | 15, 16 | 100% |  |
| 23 |  | Presentación de Casos de Uso | 1d | 2010-04-21 | 2010-04-22 | 21, 22 |  | 41.59d |
| 24 |  | Diseño Casos de uso CORE | 4.71d | 2010-04-22 | 2010-04-29 | 23 |  | 41.59d |
| 25 |  | Prueba de Documentación | 2d | 2010-04-29 | 2010-05-03 | 24 |  | 41.59d |
| 26 | 1.2.3 | **3 - Móudlo Gestión de la Información** | 11.56d | 2010-04-21 | 2010-05-07 |  |  | 21.31d |
| 27 |  | Listado de Casos de uso No CORE | 2.5d | 2010-04-21 | 2010-04-26 | 21, 22 |  | 22.81d |
| 28 |  | Desarrollo de Casos de Uso CORE | 4d | 2010-04-21 | 2010-04-27 | 21, 22 |  | 21.31d |
| 29 |  | Presentación de Casos de Uso | 2d | 2010-04-27 | 2010-04-29 | 27, 28 |  | 41.75d |
| 30 |  | Diseño Casos de uso CORE | 5.56d | 2010-04-29 | 2010-05-07 | 29 |  | 41.75d |
| 31 |  | Prueba de Documentación | 2d | 2010-04-27 | 2010-04-29 | 27, 28 |  | 21.31d |
| 32 | 1.2.4 | **4 - Móudlo Gestión de Ponderaciones** | 11d | 2010-04-29 | 2010-05-14 |  |  | 21.31d |
| 33 |  | Listado de Casos de uso No CORE | 3d | 2010-04-29 | 2010-05-04 | 27, 28, 31 |  | 21.31d |
| 34 |  | Desarrollo de Casos de Uso CORE | 2d | 2010-05-04 | 2010-05-06 | 27, 28, 33 |  | 21.31d |
| 35 |  | Presentación de Casos de Uso | 1d | 2010-05-06 | 2010-05-07 | 33, 34 |  | 21.31d |
| 36 |  | Diseño Casos de uso CORE | 4.29d | 2010-05-07 | 2010-05-13 | 35 |  | 37.02d |
| 37 |  | Prueba de Documentación | 4d | 2010-05-10 | 2010-05-14 | 35FS+1d |  | 21.31d |
| 38 |  | Evolución de Proyecto: Primer entrega | 0d? | 2010-05-14 | 2010-05-14 | 37 |  | 32.31d |
| 39 |  | Casos de uso: Primer entrega (E2) | 0d | 2010-05-14 | 2010-05-14 | 37 |  | 17.31d |
| 40 |  | Diagrama de Clases: Primer entrega(E3) | 0d | 2010-05-14 | 2010-05-14 | 37 |  | 17.31d |
| 41 |  | Diagrama de Secuencia: Primer entrega (E4) | 0d | 2010-05-14 | 2010-05-14 | 37 |  | 32.31d |
| 42 | 1.2.9 | **5 - Móudlo Gestión de Reservas** | 22.46d | 2010-05-06 A | 2010-06-08 |  | 49% | 19.84d |
| 43 |  | Listado de Casos de uso No CORE | 4d | 2010-05-06 A | 2010-05-12 A | 33, 34 | 100% |  |
| 44 |  | Desarrollo de Casos de Uso CORE | 9d | 2010-05-06 A | 2010-05-19 A | 33, 34 | 100% |  |
| 45 |  | Presentación de Casos de Uso | 1d | 2010-05-19 | 2010-05-20 | 43, 44 |  | 19.84d |
| 46 |  | Diseño Casos de uso CORE | 9.46d | 2010-05-20 | 2010-06-03 | 45 |  | 19.84d |
| 47 |  | Prueba de Documentación | 3d | 2010-06-03 | 2010-06-08 | 46 |  | 19.84d |
| 48 | 1.2.10 | **6 - Móudlo Gestión de Restaurantes** | 20.84d | 2010-05-19 | 2010-06-17 |  |  | 0d |
| 49 |  | Listado de Casos de uso No CORE | 5d | 2010-05-19 | 2010-05-26 | 43, 44 |  | 2.5d |
| 50 |  | Desarrollo de Casos de Uso CORE | 7.5d | 2010-05-19 | 2010-05-31 | 43, 44 |  | 0d |
| 51 |  | Presentación de Casos de Uso | 1.25d | 2010-05-31 | 2010-06-01 | 49, 50 |  | 12.46d |
| 52 |  | Diseño Casos de uso CORE | 9.09d | 2010-06-01 | 2010-06-14 | 51 |  | 12.46d |
| 53 |  | Prueba de Documentación | 3d | 2010-06-14 | 2010-06-17 | 52 |  | 12.46d |
| 54 |  | Evolución de Proyecto: Segunda entrega | 0d | 2010-06-04 | 2010-06-04 | 39FS+15d, 40FS+15d |  | 17.31d |
| 55 |  | Entrega E.R.S. (E5) | 0d | 2010-06-04 | 2010-06-04 | 39FS+15d, 40FS+15d |  | 17.31d |
| 56 | 1.2.13 | **7 - Móudlo Gestión de Promociones** | 11.81d | 2010-05-31 | 2010-06-15 |  |  | 0d |
| 57 |  | Listado de Casos de uso No CORE | 4d | 2010-05-31 | 2010-06-04 | 49, 50 |  | 0d |
| 58 |  | Desarrollo de Casos de Uso CORE | 4d | 2010-05-31 | 2010-06-04 | 49, 50 |  | 0d |
| 59 |  | Fin de Casos de Uso Funcionales | 0d | 2010-06-04 | 2010-06-04 | 58, 57 |  | 21.81d |
| 60 |  | Presentación de Casos de Uso | 1d | 2010-06-04 | 2010-06-07 | 57, 58 |  | 0d |
| 61 |  | Diseño Casos de uso CORE | 5.56d | 2010-06-07 | 2010-06-14 | 60 |  | 0d |
| 62 |  | Fin de Diseño de CUs Funcionales | 0d | 2010-06-14 | 2010-06-14 | 61 |  | 0d |
| 63 |  | Prueba de Documentación | 1.25d | 2010-06-14 | 2010-06-15 | 62 |  | 0d |
| 64 |  | Prueba General de Documentación | 10d | 2010-06-15 | 2010-06-30 | 63 |  | 0d |
| 65 |  | Evolución de Proyecto: Tercer entrega | 0d | 2010-06-30 | 2010-06-30 | 64 |  | 0d |
| 66 |  | Entrega Casos de Uso (E6) | 0d | 2010-06-30 | 2010-06-30 | 39, 65 |  | 0d |
| 67 |  | Entrega Casos de Prueba (E7) | 0d | 2010-06-30 | 2010-06-30 | 64, 39 |  | 0d |
| 68 |  | Entrega Diagrama de Clases (E8) | 0d | 2010-06-30 | 2010-06-30 | 64, 39 |  | 0d |
| 69 |  | Entrega Diagrama de Secuencia (E9) | 0d | 2010-06-30 | 2010-06-30 | 64, 39 |  | 0d |
| 70 |  | Fin de Análisis y Diseño (Elaboración) | 0d | 2010-06-17 | 2010-06-17 | 14, 20, 26, 32, 42, 48, 56 |  | 53.46d |

| ID | WBS | Task | Duration | Start | Finish | Predecessors | Total float |
| --- | --- | --- | --- | --- | --- | --- | --- |
| 71 | 1.4 | **Construcción** | 41d | 2010-06-30 | 2010-08-30 | 13 | 0d |
| 72 | 1.4.1 | **10 (Diseño de Pantallas)** | 41d | 2010-06-30 | 2010-08-30 | 13 | 0d |
| 73 |  | Selección de Pantallas principales | 30d | 2010-06-30 | 2010-08-12 |  | 1d |
| 74 |  | Diseño general de presentación | 39d | 2010-06-30 | 2010-08-26 |  | 0d |
| 75 |  | Navegación de Pantallas | 10d | 2010-08-13 | 2010-08-30 | 73, 74FS-8d | 0d |
| 76 |  | Entrega Documentación de Análisis y Diseño FINAL (E9) | 0d | 2010-08-30 | 2010-08-30 | 75 | 0d |
| 77 | 1.4.2 | **1 - …** | 0d | 2010-06-30 | 2010-06-30 |  | 41d |
| 78 |  | Desarrollo | 0d | 2010-06-30 | 2010-06-30 |  | 41d |
| 79 |  | Pruebas | 0d | 2010-06-30 | 2010-06-30 |  | 41d |
| 80 | 1.5 | **Transición** | 0d | 2010-06-30 | 2010-06-30 | 13 | 41d |
| 81 | 1.5.1 | **1 - Implementación y Soporte** | 0d | 2010-06-30 | 2010-06-30 |  | 41d |
| 82 |  | Implementación | 0d | 2010-06-30 | 2010-06-30 |  | 41d |
| 83 |  | Finalización de Proyecto para Facultad | 0d | 2010-06-30 | 2010-06-30 |  | 41d |
| 84 |  | Soporte Técnico | 0d | 2010-06-30 | 2010-06-30 |  | 41d |

## Version 2 (saved 2010-05-20)

Note of the change: Cambios generales previos a la entrega del informe de avance

Last finish stays 2010-08-30. Complete tasks 17 → 16.

Changed:

| ID | Task | Start | Finish | Complete | Total float |
| --- | --- | --- | --- | --- | --- |
| 1 | **Proyecto Nuevo** |  |  | 24% → 25% |  |
| 13 | **Elaboración** |  |  | 18% → 19% |  |
| 42 | **5 - Móudlo Gestión de Reservas** |  |  | 49% → 41% |  |
| 44 | Desarrollo de Casos de Uso CORE |  | 2010-05-19 A → 2010-05-19 | 100% → 75% | none → 0d |
| 48 | **6 - Móudlo Gestión de Restaurantes** | 2010-05-19 A |  | 0% → 15% | 0d → 12.46d |
| 49 | Listado de Casos de uso No CORE | 2010-05-19 A |  | 0% → 75% |  |

## Version 3 (saved 2010-05-21)

Note of the change: Creé un nuevo Base Line

Last finish stays 2010-08-30. Complete tasks 16 → 17.

Changed:

| ID | Task | Start | Finish | Complete | Total float |
| --- | --- | --- | --- | --- | --- |
| 1 | **Proyecto Nuevo** |  |  | 25% → 26% | 4d → 0d |
| 13 | **Elaboración** |  |  | 19% → 22% | 4d → 0d |
| 26 | **3 - Móudlo Gestión de la Información** | 2010-04-21 A |  | 0% → 16% | 6.75d → 37.75d |
| 27 | Listado de Casos de uso No CORE | 2010-04-21 A | 2010-04-26 A | 0% → 100% | 8.25d → none |
| 48 | **6 - Móudlo Gestión de Restaurantes** |  |  | 15% → 20% | 12.46d → 8.46d |
| 49 | Listado de Casos de uso No CORE |  |  | 75% → 90% |  |
| 50 | Desarrollo de Casos de Uso CORE | 2010-05-19 A |  | 0% → 10% |  |

## Version 4 (saved 2010-05-27)

Note of the change: Quité el 7mo módulo y agregué la semana de restraso

Last finish stays 2010-08-30. Complete tasks 17 → 19.

Removed: 56 7 - Móudlo Gestión de Promociones; 57 Listado de Casos de uso No CORE; 58 Desarrollo de Casos de Uso CORE; 60 Presentación de Casos de Uso; 61 Diseño Casos de uso CORE; 63 Prueba de Documentación

Changed:

| ID | Task | Start | Finish | Duration | Complete | Total float | Predecessors | Other |
| --- | --- | --- | --- | --- | --- | --- | --- | --- |
| 1 | **Proyecto Nuevo** |  |  | 100.81d? → 100d? | 26% → 25% |  |  |  |
| 13 | **Elaboración** | 2010-04-13 A → 2010-04-20 A (+7d) |  | 55.31d? → 49.5d? | 22% → 19% |  |  |  |
| 14 | **1 - Módulo Gestión de Acceso** | 2010-04-13 A → 2010-04-20 A (+7d) | 2010-04-21 → 2010-04-28 (+7d) |  |  | 49.91d → 44.1d |  |  |
| 15 | Listado de Casos de uso No CORE | 2010-04-13 A → 2010-04-20 A (+7d) | 2010-04-14 A → 2010-04-21 A (+7d) |  |  |  | 8 → 8FS+5d |  |
| 16 | Desarrollo de Casos de Uso CORE | 2010-04-13 A → 2010-04-20 A (+7d) | 2010-04-15 A → 2010-04-22 A (+7d) |  |  |  | 8 → 8FS+5d |  |
| 17 | Presentación de Casos de Uso | 2010-04-15 A → 2010-04-22 A (+7d) | 2010-04-16 A → 2010-04-23 A (+7d) |  |  |  |  |  |
| 18 | Diseño Casos de uso CORE | 2010-04-16 → 2010-04-23 (+7d) | 2010-04-21 → 2010-04-28 (+7d) |  |  | 49.91d → 44.1d |  |  |
| 19 | Prueba de Documentación | 2010-04-16 → 2010-04-23 (+7d) | 2010-04-19 → 2010-04-26 (+7d) |  |  | 51.31d → 45.5d |  |  |
| 20 | **2 - Móudlo Gestión de Comensales** | 2010-04-15 A → 2010-04-22 A (+7d) | 2010-05-03 → 2010-05-10 (+7d) |  | 46% → 49% | 41.59d → 35.79d |  |  |
| 21 | Listado de Casos de uso No CORE | 2010-04-15 A → 2010-04-22 A (+7d) | 2010-04-20 A → 2010-04-27 A (+7d) |  |  |  |  |  |
| 22 | Desarrollo de Casos de Uso CORE | 2010-04-15 A → 2010-04-22 A (+7d) | 2010-04-21 A → 2010-04-28 A (+7d) |  |  |  |  |  |
| 23 | Presentación de Casos de Uso | 2010-04-21 → 2010-04-28 A (+7d) | 2010-04-22 → 2010-04-29 (+7d) |  | 0% → 50% | 41.59d → 35.79d |  |  |
| 24 | Diseño Casos de uso CORE | 2010-04-22 → 2010-04-29 (+7d) | 2010-04-29 → 2010-05-06 (+7d) |  |  | 41.59d → 35.79d |  |  |
| 25 | Prueba de Documentación | 2010-04-29 → 2010-05-06 (+7d) | 2010-05-03 → 2010-05-10 (+7d) |  |  | 41.59d → 35.79d |  |  |
| 26 | **3 - Móudlo Gestión de la Información** | 2010-04-21 A → 2010-04-28 A (+7d) | 2010-05-07 → 2010-05-14 (+7d) |  | 16% → 8% | 37.75d → 31.94d |  |  |
| 27 | Listado de Casos de uso No CORE | 2010-04-21 A → 2010-04-28 A (+7d) | 2010-04-26 A → 2010-05-03 (+7d) |  | 100% → 50% | none → 3.6d |  |  |
| 28 | Desarrollo de Casos de Uso CORE | 2010-04-21 → 2010-04-28 (+7d) | 2010-04-27 → 2010-05-04 (+7d) |  |  | 7.5d → 2.1d |  |  |
| 29 | Presentación de Casos de Uso | 2010-04-27 → 2010-05-04 (+7d) | 2010-04-29 → 2010-05-06 (+7d) |  |  | 37.75d → 31.94d |  |  |
| 30 | Diseño Casos de uso CORE | 2010-04-29 → 2010-05-06 (+7d) | 2010-05-07 → 2010-05-14 (+7d) |  |  | 37.75d → 31.94d |  |  |
| 31 | Prueba de Documentación | 2010-04-27 → 2010-05-04 (+7d) | 2010-04-29 → 2010-05-06 (+7d) |  |  | 7.5d → 2.1d |  |  |
| 32 | Evolución de Proyecto: Primer entrega | 2010-05-14 A | 2010-05-14 A |  | 0% → 100% | 32.31d → none | 41 → 26 |  |
| 33 | Casos de uso: Primer entrega (E2) | 2010-05-14 A | 2010-05-14 A |  | 0% → 100% | 17.31d → none | 41 → 26 |  |
| 34 | Diagrama de Clases: Primer entrega(E3) | 2010-05-14 A | 2010-05-14 A |  | 0% → 100% | 17.31d → none | 41 → 26 |  |
| 35 | Diagrama de Secuencia: Primer entrega (E4) | 2010-05-14 A | 2010-05-14 A |  | 0% → 100% | 32.31d → none | 41 → 26 | resources Arquitecto; Desarrollador; Líder de Proyecto → Arquitecto [50%]; Desarrollador; Líder de Proyecto [50%] |
| 36 | **4 - Móudlo Gestión de Ponderaciones** | 2010-04-29 → 2010-05-06 A (+7d) | 2010-05-14 → 2010-05-21 (+7d) |  | 0% → 2% | 7.5d → 26.5d |  |  |
| 37 | Listado de Casos de uso No CORE | 2010-04-29 → 2010-05-06 A (+7d) | 2010-05-04 → 2010-05-11 (+7d) |  | 0% → 10% | 7.5d → 1.8d |  |  |
| 38 | Desarrollo de Casos de Uso CORE | 2010-05-04 → 2010-05-11 (+7d) | 2010-05-06 → 2010-05-13 (+7d) |  |  | 7.5d → 1.8d |  |  |
| 39 | Presentación de Casos de Uso | 2010-05-06 → 2010-05-13 (+7d) | 2010-05-07 → 2010-05-14 (+7d) |  |  | 17.31d → 26.5d |  |  |
| 40 | Diseño Casos de uso CORE | 2010-05-07 → 2010-05-14 (+7d) | 2010-05-13 → 2010-05-20 (+7d) |  |  | 33.02d → 27.21d |  |  |
| 41 | Prueba de Documentación | 2010-05-10 → 2010-05-17 (+7d) | 2010-05-14 → 2010-05-21 (+7d) |  |  | 17.31d → 26.5d |  |  |
| 42 | **5 - Móudlo Gestión de Reservas** | 2010-05-06 A → 2010-05-13 A (+7d) | 2010-06-08 → 2010-06-15 (+7d) |  | 41% → 19% | 15.84d → 10.04d |  |  |
| 43 | Listado de Casos de uso No CORE | 2010-05-06 A → 2010-05-13 A (+7d) | 2010-05-12 A → 2010-05-19 (+7d) |  | 100% → 80% | none → 5d |  |  |
| 44 | Desarrollo de Casos de Uso CORE | 2010-05-06 A → 2010-05-13 A (+7d) | 2010-05-19 → 2010-05-26 (+7d) |  | 75% → 20% | 0.75d → 0d |  |  |
| 45 | Presentación de Casos de Uso | 2010-05-19 → 2010-05-26 (+7d) | 2010-05-20 → 2010-05-27 (+7d) |  |  | 15.84d → 10.04d |  |  |
| 46 | Diseño Casos de uso CORE | 2010-05-20 → 2010-05-27 (+7d) | 2010-06-03 → 2010-06-10 (+7d) |  |  | 15.84d → 10.04d |  |  |
| 47 | Prueba de Documentación | 2010-06-03 → 2010-06-10 (+7d) | 2010-06-08 → 2010-06-15 (+7d) |  |  | 15.84d → 10.04d |  |  |
| 48 | **6 - Móudlo Gestión de Restaurantes** | 2010-05-19 A → 2010-05-27 A (+8d) | 2010-06-17 → 2010-06-28 (+11d) |  | 20% → 15% | 8.46d → 1.66d |  |  |
| 49 | Listado de Casos de uso No CORE | 2010-05-19 A → 2010-05-27 A (+8d) | 2010-05-26 → 2010-06-03 (+8d) |  | 90% → 80% |  | 43, 44 → 43FS+1d, 44FS+1d |  |
| 50 | Desarrollo de Casos de Uso CORE | 2010-05-19 A → 2010-05-27 (+8d) | 2010-05-31 → 2010-06-08 (+8d) |  | 10% → 0% |  | 43, 44 → 43FS+1d, 44FS+1d |  |
| 51 | Fin de Casos de Uso Funcionales | 2010-06-04 → 2010-06-08 (+4d) | 2010-06-04 → 2010-06-08 (+4d) |  |  | 17.81d → 1.66d | Desarrollo de Casos de Uso CORE, Listado de Casos de uso No CORE → 50, 49 |  |
| 52 | Presentación de Casos de Uso | 2010-05-31 → 2010-06-08 (+8d) | 2010-06-01 → 2010-06-09 (+8d) |  |  | 8.46d → 1.66d | 49, 50 → 49, 51 |  |
| 53 | Diseño Casos de uso CORE | 2010-06-01 → 2010-06-09 (+8d) | 2010-06-14 → 2010-06-23 (+9d) |  |  | 8.46d → 1.66d |  |  |
| 54 | Fin de Diseño de CUs Funcionales | 2010-06-14 → 2010-06-23 (+9d) | 2010-06-14 → 2010-06-23 (+9d) |  |  | 0d → 1.66d | Diseño Casos de uso CORE → 53 |  |
| 55 | Prueba de Documentación | 2010-06-14 → 2010-06-23 (+9d) | 2010-06-17 → 2010-06-28 (+11d) |  |  | 8.46d → 1.66d | 53 → 54 |  |
| 57 | Entrega E.R.S. (E5) |  |  |  |  | 17.31d → 16.94d |  | resources Líder de Proyecto; Analista Funcional → Líder de Proyecto [50%]; Analista Funcional [50%] |
| 58 | Prueba General de Documentación |  |  |  |  |  | Prueba de Documentación → 15FS+5d, 16FS+5d, 21FS+5d, 22FS+5d, 27FS+5d, 28FS+5d, 37FS+5d, 38FS+5d, 43FS+5d, 44FS+5d, 49FS+5d, 50FS+5d |  |
| 60 | Entrega Casos de Uso (E6) |  |  |  |  |  |  | resources Líder de Proyecto; Analista Funcional → Líder de Proyecto [50%]; Analista Funcional [50%] |
| 61 | Entrega Casos de Prueba (E7) |  |  |  |  |  |  | resources Analista Funcional; Líder de Proyecto → Analista Funcional; Líder de Proyecto [50%] |
| 64 | Fin de Análisis y Diseño (Elaboración) | 2010-06-17 → 2010-06-23 (+6d) | 2010-06-17 → 2010-06-23 (+6d) |  |  | 49.46d → 45.66d | 14, 20, 26, 36, 42, 48, 7 - Móudlo Gestión de Promociones → 51, 54 |  |

## Version 5 (saved 2010-06-05)

Note of the change: actualice porcentajes

Last finish stays 2010-08-30.

Changed:

| ID | Task | Start | Complete |
| --- | --- | --- | --- |
| 56 | Evolución de Proyecto: Segunda entrega | 2010-06-04 A | 0% → 50% |
| 57 | Entrega E.R.S. (E5) | 2010-06-04 A | 0% → 80% |
